# Sistema DDI

How a schedule from a web Gantt chart changed from version to version. A marks actual dates.

## Version 1 (saved 2025-07-08)

| ID | WBS | Task | Duration | Start | Finish | Predecessors | Complete |
| --- | --- | --- | --- | --- | --- | --- | --- |
| 2 | 1 | **Configuracion Inicial** | 25d | 2025-03-02 | 2025-04-04 |  | 100% |
| 3 |  | Instalación y configuración de Servicios Web | 7d | 2025-03-02 | 2025-03-11 |  | 100% |
| 4 |  | Configuración de Servidor en la red local Municipal | 10d | 2025-03-11 | 2025-03-25 | 3 | 100% |
| 5 |  | Lanzamiento del Sitio Web | 8d | 2025-03-25 | 2025-04-04 | 4 | 100% |
| 6 |  | Configuración sitio Web | 8d | 2025-03-25 | 2025-04-04 | 4 | 100% |
| 7 | 2 | **Pruebas del sistema** | 40d | 2025-04-07 | 2025-05-30 |  | 95% |
| 8 |  | Pruebas de Conexión DB | 2d | 2025-04-07 | 2025-04-08 | 6 | 100% |
| 9 |  | Pruebas de comunicación entre frontend y backend | 8d | 2025-04-09 | 2025-04-18 | 8 | 100% |
| 10 |  | Configuración de Perfile Administrativos | 5d | 2025-04-21 | 2025-04-25 | 9 | 100% |
| 11 |  | Pruebas de Ingreso/Login | 5d | 2025-04-28 | 2025-05-02 | 10 | 100% |
| 12 |  | Pruebas de almacenar Requerimientos de sistemas. | 10d | 2025-05-05 | 2025-05-16 | 11 | 100% |
| 13 |  | Pruebas de Notificaciones Internas | 10d | 2025-05-19 | 2025-05-30 | 12 | 80% |
| 14 | 3 | **Carga de datos** | 112d | 2025-04-28 | 2025-09-30 |  | 53% |
| 15 |  | Registro manual de funcionarios | 112d | 2025-04-28 | 2025-09-30 | 10 | 50% |
| 16 |  | Registro de Computadores Municipales | 112d | 2025-04-28 | 2025-09-30 | 10 | 50% |
| 17 |  | Registro de Sistemas Municipales | 10d | 2025-04-28 | 2025-05-09 | 10 | 100% |
| 18 |  | Verificar relación entre Funcionarios, Sistemas y Computadores. | 5d | 2025-05-12 | 2025-05-16 | 17 | 100% |
| 19 |  | Generar Informes y Listados | 10d | 2025-06-02 | 2025-06-13 | 13 | 60% |
| 20 |  | Corrección de errores | 135d | 2025-03-25 | 2025-09-30 |  | 80% |

## Version 2 (saved 2025-07-08)

Last finish stays 2025-09-30. Complete tasks 11 → 12.

Added:

| ID | Task | Duration | Start | Finish | Predecessors |
| --- | --- | --- | --- | --- | --- |
| 5 | Instalación y Ejecución de Base de Datos | 5d | 2025-03-23 | 2025-03-28 | 4 |

Changed:

| ID | Task | Start | Finish | Duration | Predecessors |
| --- | --- | --- | --- | --- | --- |
| 4 | Configuración de Servidor en la red local Municipal |  | 2025-03-25 → 2025-03-21 (-4d) | 10d → 8d |  |
| 6 | Lanzamiento del Sitio Web | 2025-03-25 → 2025-03-30 (+5d) |  | 8d → 5d | 4 → 5 |
| 7 | Configuración sitio Web | 2025-03-25 → 2025-03-30 (+5d) |  | 8d → 5d | 4 → 5 |
